# FOPLP 面板式封装

Schedule from a web Gantt chart, 2025-10-20 to 2026-10-19.
Every day is a working day

## Schedule

| ID | WBS | Task | Duration | Start | Finish | Complete | Status |
| --- | --- | --- | --- | --- | --- | --- | --- |
| 2 | 1 | Kickoff | 45d | 2025-12-08 | 2026-01-21 | 100% | done |
| 3 | 2 | **Process setup** | 96d | 2025-10-20 | 2026-01-23 | 67% |  |
| 4 | 2.1 | Wafer process | 33d | 2025-12-22 | 2026-01-23 | 100% |  |
| 5 | 2.2 | Design fix | 9d | 2025-10-20 | 2025-10-28 | 100% | done |
| 6 | 2.3 | FOPLP sample | 21d | 2025-10-21 | 2025-11-10 |  |  |
| 7 | 3 | **Pre-qual lot** | 365d | 2025-10-20 | 2026-10-19 | 100% |  |
| 8 | 3.1 | RDL WAFER | 217d | 2026-03-17 | 2026-10-19 | 100% | done |
| 9 | 3.2 | FOPLP | 22d | 2025-10-20 | 2025-11-10 | 100% |  |
| 10 | 3.3 | FT | 14d | 2025-12-17 | 2025-12-30 | 100% |  |
| 11 | 3.4 | RE | 30d | 2025-12-17 | 2026-01-15 | 100% |  |
| 12 | 4 | **Formal Qual.** | 32d | 2025-10-27 | 2025-11-27 |  |  |
| 13 | 4.1 | RDL WAFER | 32d | 2025-10-27 | 2025-11-27 |  |  |
| 14 | 4.2 | FOPLP | 5d | 2025-10-27 | 2025-10-31 |  |  |
| 15 | 4.3 | FT | 1d | 2025-10-27 | 2025-10-27 |  |  |
| 16 | 4.4 | RE | 1d | 2025-10-27 | 2025-10-27 |  |  |

Notes:
- 8: FOPLP8X8 方案 (背面漏铜和漏Si) 待台达确认
- 9: 3-FM+2M
